# SmartParking

Schedule from MS Project, 2016-09-05 to 2017-12-01, costs in $, A marks actual dates.

## Calendars

- Standard: Mon-Fri 09:00-13:00, 15:00-19:00; Sat-Sun off.

## Schedule

| ID | WBS | Task | Duration | Start | Finish | Complete | Remaining | Total slack | Constraint | Work | Actual work | Cost | Actual cost |
| --- | --- | --- | --- | --- | --- | --- | --- | --- | --- | --- | --- | --- | --- |
| 1 | 1 | **SmartParking** | 325d | 2016-09-05 A | 2017-12-01 | 67% | 107.61d | 0d |  | 2164h | 1440h | 50,810 | 33,580 |
| 2 | 1.1 | **Definición** | 39.75d | 2016-09-05 A | 2016-10-28 A | 100% |  |  |  | 356h | 356h | 6,550 | 6,550 |
| 3 | 1.1.1 | **Apertura de proyecto** | 19.75d | 2016-09-05 A | 2016-09-30 A | 100% |  |  |  | 160h | 160h | 3,850 | 3,850 |
| 4 | 1.1.1.1 | Descripción del proyecto | 0.75d | 2016-09-05 A | 2016-09-05 A | 100% |  |  | must start on 2016-09-05 | 6h | 6h | 1,000 | 1,000 |
| 5 | 1.1.1.2 | Definir equipo de trabajo | 9.75d | 2016-09-12 A | 2016-09-23 A | 100% |  |  | must start on 2016-09-12 | 78h | 78h | 1,500 | 1,500 |
| 6 | 1.1.1.3 | Creación de repositorio | 4.75d | 2016-09-26 A | 2016-09-30 A | 100% |  |  | must start on 2016-09-26 | 38h | 38h | 800 | 800 |
| 7 | 1.1.1.4 | Formato de control de proyecto | 4.75d | 2016-09-26 A | 2016-09-30 A | 100% |  |  | start no earlier than 2016-09-26 | 38h | 38h | 550 | 550 |
| 8 | 1.1.2 | **Modelado de negocios** | 19.75d | 2016-10-03 A | 2016-10-28 A | 100% |  |  |  | 196h | 196h | 2,700 | 2,700 |
| 9 | 1.1.2.1 | Plan de negocios | 19.75d | 2016-10-03 A | 2016-10-28 A | 100% |  |  | must start on 2016-10-03 | 158h | 158h | 2,500 | 2,500 |
| 10 | 1.1.2.2 | Glosario | 4.75d | 2016-10-24 A | 2016-10-28 A | 100% |  |  | must start on 2016-10-24 | 38h | 38h | 200 | 200 |
| 11 | 1.2 | **Requirimientos** | 9.75d | 2016-10-31 A | 2016-11-11 A | 100% |  |  |  | 78h | 78h | 770 | 770 |
| 12 | 1.2.1 | Plan de especificación de requisitos | 9.75d | 2016-10-31 A | 2016-11-11 A | 100% |  |  | start no earlier than 2016-10-31 | 78h | 78h | 770 | 770 |
| 13 | 1.3 | **Caso de desarollo** | 14.75d | 2016-11-14 A | 2016-12-02 A | 100% |  |  |  | 118h | 118h | 1,500 | 1,500 |
| 14 | 1.3.1 | Plan de desarrollo | 14.75d | 2016-11-14 A | 2016-12-02 A | 100% |  |  | must start on 2016-11-14 | 118h | 118h | 1,500 | 1,500 |
| 15 | 1.4 | **Análisis y Diseño** | 59.75d | 2017-01-09 A | 2017-03-31 A | 100% |  |  |  | 540h | 540h | 4,530 | 4,530 |
| 16 | 1.4.1 | **Elaboración de diagramas** | 29.75d | 2017-01-09 A | 2017-02-17 A | 100% |  |  |  | 308h | 308h | 2,250 | 2,250 |
| 17 | 1.4.1.1 | Casos de uso | 4.75d | 2017-01-09 A | 2017-01-13 A | 100% |  |  | must start on 2017-01-09 | 38h | 38h | 400 | 400 |
| 18 | 1.4.1.2 | Diagrama de clases | 4.75d | 2017-01-16 A | 2017-01-20 A | 100% |  |  | start no earlier than 2017-01-16 | 38h | 38h | 300 | 300 |
| 19 | 1.4.1.3 | Diagrama de secuencia | 4.75d | 2017-01-23 A | 2017-01-27 A | 100% |  |  | start no earlier than 2017-01-23 | 38h | 38h | 350 | 350 |
| 20 | 1.4.1.4 | Diagrama de despliegue | 4.75d | 2017-01-30 A | 2017-02-03 A | 100% |  |  | must start on 2017-01-30 | 38h | 38h | 250 | 250 |
| 21 | 1.4.1.5 | Diagrama de componentes | 9.75d | 2017-02-06 A | 2017-02-17 A | 100% |  |  | must start on 2017-02-06 | 78h | 78h | 450 | 450 |
| 22 | 1.4.1.6 | Diagrama de implementación | 9.75d | 2017-02-06 A | 2017-02-17 A | 100% |  |  | must start on 2017-02-06 | 78h | 78h | 500 | 500 |
| 23 | 1.4.2 | Documento de arquitectura del software | 4.75d | 2017-02-20 A | 2017-02-24 A | 100% |  |  | must start on 2017-02-20 | 38h | 38h | 300 | 300 |
| 24 | 1.4.3 | **Elaboración de base de datos** | 24.75d | 2017-02-27 A | 2017-03-31 A | 100% |  |  |  | 194h | 194h | 1,980 | 1,980 |
| 25 | 1.4.3.1 | Diagrama entidad-relación | 4.75d | 2017-02-27 A | 2017-03-03 A | 100% |  |  | start no earlier than 2017-02-27 | 38h | 38h | 480 | 480 |
| 26 | 1.4.3.2 | Diagrama Relacional | 4.75d | 2017-03-06 A | 2017-03-10 A | 100% |  |  | must start on 2017-03-06 | 38h | 38h | 300 | 300 |
| 27 | 1.4.3.3 | Creación de script | 14.75d | 2017-03-13 A | 2017-03-31 A | 100% |  |  | must start on 2017-03-13 | 118h | 118h | 1,200 | 1,200 |

| ID | WBS | Task | Duration | Start | Finish | Complete | Remaining | Total slack | Constraint | Work | Actual work | Cost | Actual cost |
| --- | --- | --- | --- | --- | --- | --- | --- | --- | --- | --- | --- | --- | --- |
| 28 | 1.5 | **Construcción** | 100d | 2017-04-03 A | 2017-08-18 | 61% | 38.89d | 75d |  | 552h | 316h | 32,000 | 19,750 |
| 29 | 1.5.1 | Plan de Integración | 5d | 2017-04-03 A | 2017-04-07 | 10% | 4.5d | 170d | start no earlier than 2017-04-03 | 40h | 4h | 500 | 50 |
| 30 | 1.5.2 | **Software** | 29.75d | 2017-04-10 A | 2017-05-19 A | 100% |  |  |  | 234h | 234h | 4,600 | 4,600 |
| 31 | 1.5.2.1 | Elaborar menu | 4.75d | 2017-04-10 A | 2017-04-14 A | 100% |  |  | must start on 2017-04-10 | 38h | 38h | 600 | 600 |
| 32 | 1.5.2.2 | Elaborar módulos | 14.75d | 2017-04-17 A | 2017-05-05 A | 100% |  |  | must start on 2017-04-17 | 118h | 118h | 2,500 | 2,500 |
| 33 | 1.5.2.3 | Conexión a base de datos | 9.75d | 2017-05-08 A | 2017-05-19 A | 100% |  |  | must start on 2017-05-08 | 78h | 78h | 1,500 | 1,500 |
| 34 | 1.5.3 | **Creación de funciones** | 25d | 2017-05-22 A | 2017-06-23 | 28% | 17.99d | 115d |  | 278h | 78h | 6,900 | 1,100 |
| 35 | 1.5.3.1 | Generar código fuente | 25d | 2017-05-22 | 2017-06-23 |  |  | 115d | start no earlier than 2017-05-22 | 200h |  | 5,800 |  |
| 36 | 1.5.3.2 | Creación de usuarios | 9.75d | 2017-06-05 A | 2017-06-16 A | 100% |  |  | must start on 2017-06-05 | 78h | 78h | 1,100 | 1,100 |
| 37 | 1.5.4 | Prototipo Parquímetro | 30d | 2017-07-10 A | 2017-08-18 | 70% | 9d | 0d | must start on 2017-07-10 |  |  | 20,000 | 14,000 |
| 38 | 1.6 | **Pruebas** | 15d | 2017-08-28 A | 2017-09-15 | 27% | 11d | 55d |  | 120h | 32h | 1,500 | 480 |
| 39 | 1.6.1 | **Plan de pruebas** | 10d | 2017-08-28 A | 2017-09-08 | 40% | 6d | 60d |  | 80h | 32h | 1,200 | 480 |
| 40 | 1.6.1.1 | Realizar pruebas unitarias | 5d | 2017-08-28 A | 2017-09-01 | 80% | 1d | 0d | must start on 2017-08-28 | 40h | 32h | 600 | 480 |
| 41 | 1.6.1.2 | Ejecución de pruebas unitarias | 5d | 2017-09-04 | 2017-09-08 |  |  | 60d | start no earlier than 2017-09-04 | 40h |  | 600 |  |
| 42 | 1.6.2 | Resumen de evaluación de pruebas | 5d | 2017-09-11 | 2017-09-15 |  |  | 0d | must start on 2017-09-11 | 40h |  | 300 |  |
| 43 | 1.7 | **Despliegue** | 40d | 2017-09-18 | 2017-11-10 |  |  | 5d |  | 280h |  | 1,960 |  |
| 44 | 1.7.1 | Notas de la versión | 5d | 2017-09-18 | 2017-09-22 |  |  | 50d | start no earlier than 2017-09-18 | 40h |  | 180 |  |
| 45 | 1.7.2 | Artefactos de instalación - aplicacion movil | 10d | 2017-09-25 | 2017-10-06 |  |  | 0d | must start on 2017-09-25 | 80h |  | 780 |  |
| 46 | 1.7.3 | **Administración de proyecto** | 10d | 2017-10-09 | 2017-10-20 |  |  | 0d |  | 80h |  | 300 |  |
| 47 | 1.7.3.1 | Plan de desarrollo del software | 10d | 2017-10-09 | 2017-10-20 |  |  | 0d | must start on 2017-10-09 | 80h |  | 300 |  |
| 48 | 1.7.4 | **Manuales** | 10d | 2017-10-30 | 2017-11-10 |  |  | 0d |  | 80h |  | 700 |  |
| 49 | 1.7.4.1 | Elaborar manual de usuario | 10d | 2017-10-30 | 2017-11-10 |  |  | 0d | must start on 2017-10-30 | 80h |  | 700 |  |
| 50 | 1.8 | Cierre | 15d | 2017-11-13 | 2017-12-01 |  |  | 0d | start no earlier than 2017-11-13 | 120h |  | 2,000 |  |
